Schedule from MS Project, 2019-09-02 to 2020-01-06, costs in ₽, A marks actual dates.

## Calendars

- Стандартный: Mon-Fri 09:00-13:00, 14:00-18:00; Sat-Sun off.

## Resources

| Resource | Unit | Rate |
| --- | --- | --- |
| Скоков Станислав Андреевич |  | 1200 |
| Компьютер |  | 4.96 |
| ПО |  | 17.8 |
| Директор |  |  |
| Бумага | шт | 1 |
| Картридж | мг | 1 |

## Schedule

| ID | WBS | Task | Type | Duration | Start | Finish | Predecessors | Complete | Remaining | Actual finish | Total slack | Resources | Work | Actual work | Cost | Actual cost |
| --- | --- | --- | --- | --- | --- | --- | --- | --- | --- | --- | --- | --- | --- | --- | --- | --- |
| 2 | 1 | **Этап 1. Подготовка проекта** |  | 31d | 2019-09-02 A | 2019-10-14 |  | 99% | 0d |  | 0d | Компьютер [200%]; ПО [200%] | 226.93h | 226.93h | 245,269.4 | 245,241.68 |
| 3 | 1.1 | **1.1 Устав проекта** |  | 5d | 2019-09-02 A | 2019-09-06 |  | 99% | 0d |  | 0d | Компьютер [200%] | 32h | 32h | 34,592.68 | 34,587.72 |
| 4 | 1.1.1 | **Разработка устава проекта** |  | 2d | 2019-09-02 A | 2019-09-03 A |  | 100% |  |  |  | Скоков Станислав Андреевич; Компьютер; ПО | 16h | 16h | 19,222.76 | 19,222.76 |
| 5 | 1.1.1.1 | Согласование устава |  | 2d | 2019-09-05 A | 2019-09-06 A | 4 | 100% |  |  |  | Скоков Станислав Андреевич [80%]; Директор [20%] | 16h | 16h | 15,360 | 15,360 |
| 6 | 1.1.2 | **1.2 Анализ требований** |  | 11d | 2019-09-09 A | 2019-09-23 |  | 100% |  | 2019-09-24 |  |  | 88h | 88h | 96,227.6 | 96,227.6 |
| 7 | 1.1.2.1 | **1.2.1 Техническое задание** |  | 5d | 2019-09-09 A | 2019-09-13 | 5 | 100% |  | 2019-09-16 |  |  | 40h | 40h | 44,205.52 | 44,205.52 |
| 8 | 1.1.2.1.1 | Разработка технического задания | manual | 3d | 2019-09-09 A | 2019-09-11 A |  | 100% |  |  |  | Скоков Станислав Андреевич; Компьютер; ПО | 24h | 24h | 28,822.76 | 28,822.76 |
| 9 | 1.1.2.1.2 | Согласование и утверждение технического задания | manual | 2d | 2019-09-13 A | 2019-09-16 A | 8 | 100% |  |  |  | Скоков Станислав Андреевич [80%]; Директор [20%]; Компьютер; ПО | 16h | 16h | 15,382.76 | 15,382.76 |
| 10 | 1.1.2.2 | **1.2.2 Соглашение об уровне услуг** |  | 2d | 2019-09-16 A | 2019-09-17 |  | 100% |  | 2019-09-18 |  |  | 16h | 16h | 17,325.52 | 17,325.52 |
| 11 | 1.1.2.2.1 | Разработка соглашения об уровне услуг | manual | 1d | 2019-09-16 A | 2019-09-16 A | 9 | 100% |  |  |  | Скоков Станислав Андреевич; Компьютер; ПО | 8h | 8h | 9,622.76 | 9,622.76 |
| 12 | 1.1.2.2.2 | Согласование и утверждение соглашения об уровне услуг | manual | 1d | 2019-09-18 A | 2019-09-18 A | 11 | 100% |  |  |  | Скоков Станислав Андреевич [80%]; Компьютер; ПО; Директор [20%] | 8h | 8h | 7,702.76 | 7,702.76 |
| 13 | 1.1.2.3 | **1.2.3 Анализ требований** |  | 2d | 2019-09-19 A | 2019-09-20 A |  | 100% |  |  |  | Компьютер; ПО | 16h | 16h | 17,348.28 | 17,348.28 |
| 14 | 1.1.2.3.1 | Анализ требований к проектируемой системе | manual | 1d | 2019-09-19 A | 2019-09-19 A | 12 | 100% |  |  |  | Скоков Станислав Андреевич; Компьютер; ПО | 8h | 8h | 9,622.76 | 9,622.76 |
| 15 | 1.1.2.3.2 | Согласование требований | manual | 1d | 2019-09-20 A | 2019-09-20 A | 14 | 100% |  |  |  | Скоков Станислав Андреевич [80%]; Компьютер; ПО; Директор [20%] | 8h | 8h | 7,702.76 | 7,702.76 |
| 16 | 1.1.2.4 | **1.2.4 Проектирование классов и последовательностей** |  | 2d | 2019-09-23 A | 2019-09-24 A |  | 100% |  |  |  | Компьютер; ПО | 16h | 16h | 17,348.28 | 17,348.28 |
| 17 | 1.1.2.4.1 | Проектирование классов и последовательностей | manual | 1d | 2019-09-23 A | 2019-09-23 A | 15 | 100% |  |  |  | Скоков Станислав Андреевич; Компьютер; ПО | 8h | 8h | 9,622.76 | 9,622.76 |
| 18 | 1.1.2.4.2 | Согласование классов и последовательностей | manual | 1d | 2019-09-23 A | 2019-09-23 A | 17 | 100% |  |  |  | Скоков Станислав Андреевич [80%]; Компьютер; ПО; Директор [20%] | 8h | 8h | 7,702.76 | 7,702.76 |
| 19 | 1.1.3 | **1.3 Приказ об открытии проекта** |  | 4.6d | 2019-09-25 A | 2019-10-01 A |  | 100% |  |  |  | Компьютер; ПО | 48.8h | 48.8h | 50,779.04 | 50,779.04 |
| 20 | 1.1.3.1 | Разработка приказа об открытии проекта |  | 2d | 2019-09-25 A | 2019-09-26 A | 18 | 100% |  |  |  | Скоков Станислав Андреевич; Компьютер; ПО | 16h | 16h | 19,222.76 | 19,222.76 |
| 21 | 1.1.3.2 | Согласование приказа об открытии проекта |  | 2.5d | 2019-09-27 A | 2019-10-01 A | 20 | 100% |  |  |  | Скоков Станислав Андреевич [80%]; Компьютер; ПО; Директор [20%] | 20h | 20h | 19,222.76 | 19,222.76 |
| 22 | 1.1.3.3 | Подписание приказа об открытии проекта |  | 1.6d | 2019-09-30 A | 2019-10-01 A | 21 | 100% |  |  |  | Скоков Станислав Андреевич [80%]; Компьютер; ПО; Директор [20%] | 12.8h | 12.8h | 12,310.76 | 12,310.76 |
| 23 | 1.1.4 | **1.4 Постановка задачи** |  | 4d | 2019-10-03 A | 2019-10-08 A |  | 100% |  |  |  | Компьютер; ПО | 29.33h | 29.33h | 32,068.28 | 32,068.28 |
| 24 | 1.1.4.1 | Постановка задачи |  | 2d | 2019-10-03 A | 2019-10-07 A | 22 | 100% |  |  |  | Скоков Станислав Андреевич; Компьютер; ПО | 16h | 16h | 19,222.76 | 19,222.76 |
| 25 | 1.1.4.2 | Согласование задачи |  | 1.67d | 2019-10-07 A | 2019-10-08 A | 24 | 100% |  |  |  | Скоков Станислав Андреевич [80%]; Компьютер; ПО; Директор [20%] | 13.33h | 13.33h | 12,822.76 | 12,822.76 |

| ID | WBS | Task | Type | Duration | Start | Finish | Predecessors | Complete | Remaining | Total slack | Resources | Work | Actual work | Cost | Actual cost |
| --- | --- | --- | --- | --- | --- | --- | --- | --- | --- | --- | --- | --- | --- | --- | --- |
| 26 | 1.1.5 | **1.5 Календарный план** |  | 4d | 2019-10-09 A | 2019-10-14 A |  | 100% |  |  | Компьютер; ПО | 28.8h | 28.8h | 31,556.28 | 31,556.28 |
| 27 | 1.1.5.1 | Разработка календарного плана |  | 2d | 2019-10-09 A | 2019-10-10 A | 25 | 100% |  |  | Скоков Станислав Андреевич; Компьютер; ПО | 16h | 16h | 19,222.76 | 19,222.76 |
| 28 | 1.1.5.2 | Согласование календарного плана |  | 1.6d | 2019-10-11 A | 2019-10-14 A | 27 | 100% |  |  | Скоков Станислав Андреевич [80%]; Компьютер; ПО; Директор [20%] | 12.8h | 12.8h | 12,310.76 | 12,310.76 |
| 29 | 1.2 | **Этап 2. Организация работы** |  | 24d | 2019-10-14 A | 2019-11-14 |  | 99% | 0d |  | Компьютер; ПО | 192h | 192h | 219,249.88 | 219,227.12 |
| 30 | 1.2.1 | **2.1 Сбор данных** |  | 7d | 2019-10-14 A | 2019-10-22 |  | 99% | 0d | 0d | Компьютер [200%]; ПО [200%] | 48h | 48h | 57,691.04 | 57,668.28 |
| 31 | 1.2.1.1 | Сбор исходных данных |  | 3d | 2019-10-14 A | 2019-10-16 A | 28 | 100% |  |  | Скоков Станислав Андреевич; Компьютер; ПО | 24h | 24h | 28,822.76 | 28,822.76 |
| 32 | 1.2.1.2 | Анализ исходных данных |  | 3d | 2019-10-18 A | 2019-10-22 A | 31 | 100% |  |  | Скоков Станислав Андреевич; Компьютер; ПО | 24h | 24h | 28,822.76 | 28,822.76 |
| 33 | 1.2.2 | **2.2 Описание объекта автоматизации** |  | 6d | 2019-10-23 A | 2019-10-30 A |  | 100% |  |  | Компьютер; ПО | 48h | 48h | 51,948.28 | 51,948.28 |
| 34 | 1.2.2.1 | Описание объекта автоматизации |  | 3d | 2019-10-23 A | 2019-10-25 A | 32 | 100% |  |  | Скоков Станислав Андреевич; Компьютер; ПО; Бумага [20 шт]; Картридж [20 мг] | 24h | 24h | 28,862.76 | 28,862.76 |
| 35 | 1.2.2.2 | Согласование описания объекта автоматизации |  | 3d | 2019-10-28 A | 2019-10-30 A | 34 | 100% |  |  | Скоков Станислав Андреевич [80%]; Компьютер; ПО; Директор [20%] | 24h | 24h | 23,062.76 | 23,062.76 |
| 36 | 1.2.3 | **2.3 Выбор технических и программных средств реализации** |  | 5d | 2019-10-31 A | 2019-11-06 A |  | 100% |  |  | Компьютер; ПО | 48h | 48h | 57,688.28 | 57,688.28 |
| 37 | 1.2.3.1 | Анализ существующих методов решения задачи и программных средств |  | 3d | 2019-10-31 A | 2019-11-04 A | 35 | 100% |  |  | Скоков Станислав Андреевич; Компьютер; ПО; Бумага [10 шт]; Картридж [10 мг] | 24h | 24h | 28,842.76 | 28,842.76 |
| 38 | 1.2.3.2 | Выбор технических и программных средств реализации |  | 3d | 2019-11-04 A | 2019-11-06 A | 37 | 100% |  |  | Скоков Станислав Андреевич; Компьютер; ПО | 24h | 24h | 28,822.76 | 28,822.76 |
| 39 | 1.2.4 | **2.4 Проектирование прецедентов** |  | 6d | 2019-11-08 A | 2019-11-15 A |  | 100% |  |  | Компьютер; ПО | 48h | 48h | 51,899.52 | 51,899.52 |
| 40 | 1.2.4.1 | Проектирование прецедентов |  | 3d | 2019-11-08 A | 2019-11-12 A | 38 | 100% |  |  | Скоков Станислав Андреевич; Компьютер; ПО; Бумага [7 шт]; Картридж [7 мг] | 24h | 24h | 28,836.76 | 28,836.76 |
| 41 | 1.2.4.2 | Согласование проектирования прецедентов | manual | 3d | 2019-11-13 A | 2019-11-15 A | 40 | 100% |  |  | Скоков Станислав Андреевич [80%]; Компьютер; ПО; Директор [20%] | 24h | 24h | 23,040 | 23,040 |
| 42 | 1.3 | **Этап 4. Реализация проекта** |  | 34d | 2019-11-18 A | 2020-01-02 A |  | 100% |  |  | Компьютер; ПО | 272h | 272h | 326,491.04 | 326,491.04 |
| 43 | 1.3.1 | **4.1 Структура приложения** |  | 6d | 2019-11-18 A | 2019-11-25 A |  | 100% |  |  | Компьютер; ПО | 48h | 48h | 57,622.76 | 57,622.76 |
| 44 | 1.3.1.1 | Разработка структуры приложения | manual | 6d | 2019-11-18 A | 2019-11-25 A | 41 | 100% |  |  | Скоков Станислав Андреевич; Компьютер; ПО | 48h | 48h | 57,600 | 57,600 |
| 45 | 1.3.2 | **4.2 Внешний интерфейс** |  | 14d | 2019-11-25 A | 2019-12-12 A |  | 100% |  |  | Компьютер; ПО | 112h | 112h | 134,422.76 | 134,422.76 |
| 46 | 1.3.2.1 | Разработка внешнего интерфейса | manual | 14d | 2019-11-25 A | 2019-12-12 A | 44 | 100% |  |  | Скоков Станислав Андреевич; Компьютер; ПО | 112h | 112h | 134,400 | 134,400 |
| 47 | 1.3.3 | **4.3 Интерфейс пользователя** |  | 14d | 2019-12-16 A | 2020-01-02 A |  | 100% |  |  | Компьютер; ПО | 112h | 112h | 134,422.76 | 134,422.76 |
| 48 | 1.3.3.1 | Разработка интерфейса пользователя | manual | 14d | 2019-12-16 A | 2020-01-02 A | 46 | 100% |  |  | Скоков Станислав Андреевич; Компьютер; ПО | 112h | 112h | 134,400 | 134,400 |
| 49 | 1.4 | **Этап 5. Тестирование и заполнение** |  | 2d | 2020-01-03 A | 2020-01-06 |  |  | 2d |  | Компьютер; ПО | 16h |  | 19,268.28 | 68.28 |
| 50 | 1.4.1 | **5.1 Тестирование** |  | 1d | 2020-01-03 A | 2020-01-03 |  |  | 1d |  | Компьютер; ПО | 8h |  | 9,622.76 | 22.76 |
| 51 | 1.4.1.1 | Функциональное тестирование | manual | 0.2d | 2020-01-03 | 2020-01-03 | 48 |  |  |  | Скоков Станислав Андреевич; Компьютер; ПО; Бумага; Картридж | 1.6h |  | 1,920 |  |
| 52 | 1.4.1.2 | Тестирования удобства пользования | manual | 0.2d | 2020-01-03 | 2020-01-03 | 51 |  |  |  | Скоков Станислав Андреевич; Компьютер; ПО; Бумага; Картридж | 1.6h |  | 1,920 |  |
| 53 | 1.4.1.3 | Тестирование производительности | manual | 0.2d | 2020-01-03 | 2020-01-03 | 52 |  |  |  | Скоков Станислав Андреевич; Компьютер; ПО; Бумага; Картридж | 1.6h |  | 1,920 |  |
| 54 | 1.4.1.4 | Тестирование интерфейса пользователя | manual | 0.2d | 2020-01-03 | 2020-01-03 | 53 |  |  |  | Скоков Станислав Андреевич; Компьютер; ПО; Бумага; Картридж | 1.6h |  | 1,920 |  |
| 55 | 1.4.1.5 | Тестирование безопасности | manual | 0.2d | 2020-01-03 | 2020-01-03 | 54 |  |  |  | Скоков Станислав Андреевич; Компьютер; ПО; Бумага; Картридж | 1.6h |  | 1,920 |  |

| ID | WBS | Task | Type | Duration | Start | Finish | Predecessors | Remaining | Resources | Work | Cost | Actual cost |
| --- | --- | --- | --- | --- | --- | --- | --- | --- | --- | --- | --- | --- |
| 56 | 1.4.2 | **5.2 Устранение ошибок** |  | 1d | 2020-01-06 A | 2020-01-06 |  | 1d | Компьютер; ПО | 8h | 9,622.76 | 22.76 |
| 57 | 1.4.2.1 | Устранение технических ошибок | manual | 1d | 2020-01-06 | 2020-01-06 | 55 |  | Скоков Станислав Андреевич; Компьютер; ПО | 8h | 9,600 |  |
| 58 | 1.5 | **Этап 6. Подготовка к внедрению** |  | 1d | 2020-01-06 A | 2020-01-06 |  | 1d | Компьютер; ПО | 8h | 8,708.28 | 68.28 |
| 59 | 1.5.1 | **6.1 Подготовка пользовательской документации** |  | 0.5d | 2020-01-06 A | 2020-01-06 |  | 0.5d | Компьютер; ПО | 4h | 4,822.76 | 22.76 |
| 60 | 1.5.1.1 | Подготовка пользовательской документации | manual | 0.5d | 2020-01-06 | 2020-01-06 | 57 |  | Скоков Станислав Андреевич; Компьютер; ПО; Бумага; Картридж | 4h | 4,800 |  |
| 61 | 1.5.2 | **6.2 Обучение персонала работе с системой** |  | 0.5d | 2020-01-06 A | 2020-01-06 |  | 0.5d | Компьютер; ПО | 4h | 3,862.76 | 22.76 |
| 62 | 1.5.2.1 | Обучение персонала работе с системой | manual | 0.5d | 2020-01-06 | 2020-01-06 | 60 |  | Скоков Станислав Андреевич [80%]; Компьютер; ПО; Директор [20%] | 4h | 3,840 |  |
